# TP1 - Riverside Community Library

Schedule from MS Project XML, 2026-01-05 to 2026-09-17, status date 2026-03-31, A marks actual dates.

## Calendars

- Standard: Mon-Fri 08:00-12:00, 13:00-17:00; Sat-Sun off.

## Resources

| Resource |
| --- |
| GC Crew A |
| Electrical Sub |
| Commissioning Agent |

## Schedule

| ID | WBS | Task | Type | Duration | Start | Finish | Predecessors | Complete | Remaining | Baseline start | Baseline finish | Baseline duration | Resources |
| --- | --- | --- | --- | --- | --- | --- | --- | --- | --- | --- | --- | --- | --- |
| 1 | 1 | **Design** |  | 63.12d | 2026-01-05 A | 2026-04-02 |  |  | 63.12d | 2026-01-05 | 2026-03-27 | 60d |  |
| 2 | 1.1 | Notice to proceed | milestone | 0d | 2026-01-05 A | 2026-01-05 A |  | 100% |  | 2026-01-05 | 2026-01-05 | 0d |  |
| 3 | 1.2 | Schematic design |  | 8.94d | 2026-01-05 A | 2026-01-15 A | 2 | 100% |  | 2026-01-05 | 2026-01-16 | 10d |  |
| 4 | 1.3 | Geotechnical survey |  | 5d | 2026-01-05 A | 2026-01-09 A | 2 | 100% |  | 2026-01-05 | 2026-01-09 | 5d |  |
| 5 | 1.4 | Design development |  | 18.56d | 2026-01-16 A | 2026-02-11 A | 3 | 100% |  | 2026-01-19 | 2026-02-06 | 15d |  |
| 6 | 1.5 | Interior design package |  | 6.38d | 2026-01-16 A | 2026-01-26 A | 3 | 100% |  | 2026-01-19 | 2026-01-28 | 8d |  |
| 7 | 1.6 | Permitting & approvals |  | 35d | 2026-02-12 A | 2026-04-02 | 5 | 60% | 14d | 2026-02-09 | 2026-03-27 | 35d |  |
| 8 | 2 | **Procurement** |  | 45d | 2026-02-12 A | 2026-04-15 |  |  | 45d | 2026-02-09 | 2026-04-10 | 45d |  |
| 9 | 2.1 | Long-lead equipment procurement |  | 45d | 2026-02-12 A | 2026-04-15 | 5 | 40% | 27d | 2026-02-09 | 2026-04-10 | 45d |  |
| 10 | 2.2 | Steel package fabrication |  | 30d | 2026-02-19 A | 2026-04-02 | 5FS+5d | 30% | 21d | 2026-02-16 | 2026-03-27 | 30d |  |
| 11 | 3 | **Construction** |  | 100d | 2026-04-02 | 2026-08-20 |  |  |  | 2026-03-30 | 2026-08-14 | 100d |  |
| 12 | 3.1 | Mobilization |  | 5d | 2026-04-02 | 2026-04-09 | 7 |  |  | 2026-03-30 | 2026-04-03 | 5d |  |
| 13 | 3.2 | Foundations |  | 20d | 2026-04-09 | 2026-05-07 | 12 |  |  | 2026-04-06 | 2026-05-01 | 20d | GC Crew A |
| 14 | 3.3 | Steel erection |  | 15d | 2026-05-07 | 2026-05-28 | 13, 10 |  |  | 2026-05-04 | 2026-05-22 | 15d |  |
| 15 | 3.4 | Building envelope |  | 25d | 2026-05-28 | 2026-07-02 | 14 |  |  | 2026-05-25 | 2026-06-26 | 25d | GC Crew A |
| 16 | 3.5 | MEP rough-in |  | 30d | 2026-05-14 | 2026-06-25 | 14SS+5d |  |  | 2026-05-11 | 2026-06-19 | 30d | Electrical Sub |
| 17 | 3.6 | Interior finishes |  | 25d | 2026-07-02 | 2026-08-06 | 15, 16FF+10d |  |  | 2026-06-29 | 2026-07-31 | 25d |  |
| 18 | 3.7 | Elevator install & inspection |  | 18d | 2026-07-02 | 2026-07-28 | 15 |  |  | 2026-06-29 | 2026-07-22 | 18d |  |
| 19 | 3.8 | FF&E installation |  | 10d | 2026-07-02 | 2026-07-16 | 9, 15 |  |  | 2026-06-29 | 2026-07-10 | 10d |  |
| 20 | 3.9 | Commissioning |  | 10d | 2026-08-06 | 2026-08-20 | 16, 17, 19, 18 |  |  | 2026-08-03 | 2026-08-14 | 10d | Commissioning Agent |
| 21 | 4 | **Closeout** |  | 20d | 2026-08-20 | 2026-09-17 |  |  |  | 2026-08-17 | 2026-09-11 | 20d |  |
| 22 | 4.1 | Punch list |  | 10d | 2026-08-20 | 2026-09-03 | 20 |  |  | 2026-08-17 | 2026-08-28 | 10d |  |
| 23 | 4.2 | Final inspections |  | 5d | 2026-09-03 | 2026-09-10 | 22 |  |  | 2026-08-31 | 2026-09-04 | 5d |  |
| 24 | 4.3 | Substantial completion | milestone | 0d | 2026-09-10 | 2026-09-10 | 23 |  |  | 2026-09-04 | 2026-09-04 | 0d |  |
| 25 | 4.4 | Owner training |  | 5d | 2026-08-20 | 2026-08-27 | 20 |  |  | 2026-08-17 | 2026-08-21 | 5d |  |
| 26 | 4.5 | Closeout documentation |  | 5d | 2026-09-10 | 2026-09-17 | 25, 23 |  |  | 2026-09-07 | 2026-09-11 | 5d |  |
| 27 | 4.6 | Occupancy | milestone | 0d | 2026-09-17 | 2026-09-17 | 24, 26 |  |  | 2026-09-11 | 2026-09-11 | 0d |  |
